# Agile Project Management

Schedule from MS Project, 2025-09-29 to 2025-11-21.
DT

## Calendars

- Standardowy: Mon-Fri 09:00-13:00, 14:00-18:00; Sat-Sun off.

## Schedule

| ID | WBS | Task | Type | Duration | Start | Finish | Work |
| --- | --- | --- | --- | --- | --- | --- | --- |
| 1 | 1 | **Sprint 1** |  | 2w | 2025-09-29 | 2025-10-10 | 29.4h |
| 2 | 1.1 | **Analiza wymagań i dokumentacja** |  | 10d | 2025-09-29 | 2025-10-10 | 4.4h |
| 3 | 1.1.1 | Analiza wymagań biznesowych | manual | 1d? | 2025-09-29 | 2025-09-29 | 2.4h |
| 4 | 1.1.2 | Spisanie dokumentacji projektu | manual | 1d? | 2025-09-29 | 2025-09-29 | 2h |
| 5 | 1.2 | **Projekt interfejsu (UI)** |  | 10d | 2025-09-29 | 2025-10-10 | 13h |
| 6 | 1.2.1 | Projekt makiety strony głównej | manual | 1d? | 2025-09-29 | 2025-09-29 | 5h |
| 7 | 1.2.2 | Projekt formularzy | manual | 1d? | 2025-09-29 | 2025-09-29 | 4h |
| 8 | 1.2.3 | Dobór stylów CSS i fontów | manual | 1d? | 2025-09-29 | 2025-09-29 | 4h |
| 9 | 1.3 | **Rejestracja i logowanie** |  | 10d | 2025-09-29 | 2025-10-10 | 12h |
| 10 | 1.3.1 | Utworzenie tabeli 'Users' w DB | manual | 1d? | 2025-09-29 | 2025-09-29 | 3h |
| 11 | 1.3.2 | API Backend: Logowanie | manual | 1d? | 2025-09-29 | 2025-09-29 | 4h |
| 12 | 1.3.3 | Frontend: Formularz HTML/JS | manual | 1d? | 2025-09-29 | 2025-09-29 | 5h |
| 13 | 2 | **Sprint 2** |  | 2w | 2025-10-13 | 2025-10-24 | 27.8h |
| 14 | 2.1 | **Katalog produktów (Backend + Lista)** |  | 10d | 2025-10-13 | 2025-10-24 | 9.6h |
| 15 | 2.1.1 | Backend: Endpoint GET /products | manual | 1d? | 2025-10-13 | 2025-10-13 | 4h |
| 16 | 2.1.2 | Frontend: Widok listy (HTML/CSS) | manual | 1d? | 2025-10-13 | 2025-10-13 | 3.6h |
| 17 | 2.1.3 | Frontend: Pobieranie danych (JS) | manual | 1d? | 2025-10-13 | 2025-10-13 | 2h |
| 18 | 2.2 | **Filtrowanie produktów** |  | 10d | 2025-10-13 | 2025-10-24 | 5.2h |
| 19 | 2.2.1 | Backend: Zapytania SQL (WHERE) | manual | 1d? | 2025-10-13 | 2025-10-13 | 2.2h |
| 20 | 2.2.2 | Frontend: Pasek boczny filtrów | manual | 1d? | 2025-10-13 | 2025-10-13 | 3h |
| 21 | 2.3 | **Koszyk zakupowy** |  | 10d | 2025-10-13 | 2025-10-24 | 13h |
| 22 | 2.3.1 | Backend: Sesja koszyka (Logic) | manual | 1d? | 2025-10-13 | 2025-10-13 | 4h |
| 23 | 2.3.2 | Frontend: Przycisk Dodaj (JS) | manual | 1d? | 2025-10-13 | 2025-10-13 | 4h |
| 24 | 2.3.3 | Frontend: Widok koszyka (Table) | manual | 1d? | 2025-10-13 | 2025-10-13 | 5h |

| ID | WBS | Task | Type | Duration | Start | Finish | Work |
| --- | --- | --- | --- | --- | --- | --- | --- |
| 25 | 3 | **Sprint 3** |  | 10d | 2025-10-27 | 2025-11-07 | 37.2h |
| 26 | 3.1 | **Proces składania zamówienia** |  | 10d | 2025-10-27 | 2025-11-07 | 11.2h |
| 27 | 3.1.1 | Backend: API zapisu zamówienia | manual | 1d? | 2025-10-27 | 2025-10-27 | 5h |
| 28 | 3.1.2 | Frontend: Formularz dostawy | manual | 1d? | 2025-10-27 | 2025-10-27 | 4h |
| 29 | 3.1.3 | DB: Tabela Orders i relacje | manual | 1d? | 2025-10-27 | 2025-10-27 | 2.2h |
| 30 | 3.2 | **Bramka płatności (Integracja)** |  | 10d | 2025-10-27 | 2025-11-07 | 9h |
| 31 | 3.2.1 | Integracja API (klucze, connect) | manual | 1d? | 2025-10-27 | 2025-10-27 | 5h |
| 32 | 3.2.2 | Obsługa statusów płatności (UI) | manual | 1d? | 2025-10-27 | 2025-10-27 | 4h |
| 33 | 3.3 | **Panel administracyjny** |  | 10d | 2025-10-27 | 2025-11-07 | 17h |
| 34 | 3.3.1 | Layout panelu i Dashboard | manual | 1d? | 2025-10-27 | 2025-10-27 | 5h |
| 35 | 3.3.2 | Backend: Edycja produktów | manual | 1d? | 2025-10-27 | 2025-10-27 | 6h |
| 36 | 3.3.3 | Frontend: Lista zamówień (View) | manual | 1d? | 2025-10-27 | 2025-10-27 | 6h |
| 37 | 4 | **Sprint 4** |  | 10d | 2025-11-10 | 2025-11-21 | 25.4h |
| 38 | 4.1 | **Testy funkcjonalne i integracyjne** |  | 10d | 2025-11-10 | 2025-11-21 | 10.4h |
| 39 | 4.1.1 | Scenariusze testowe (Docs) | manual | 1d? | 2025-11-10 | 2025-11-10 | 2.4h |
| 40 | 4.1.2 | Testy manualne interfejsu (UI) | manual | 1d? | 2025-11-10 | 2025-11-10 | 4h |
| 41 | 4.1.3 | Testy integracyjne API (Auto) | manual | 1d? | 2025-11-10 | 2025-11-10 | 4h |
| 42 | 4.2 | **Optymalizacja wydajności** |  | 10d | 2025-11-10 | 2025-11-21 | 8.4h |
| 43 | 4.2.1 | Minifikacja kodu JS/CSS | manual | 1d? | 2025-11-10 | 2025-11-10 | 2.4h |
| 44 | 4.2.2 | Optymalizacja zapytań SQL | manual | 1d? | 2025-11-10 | 2025-11-10 | 2h |
| 45 | 4.2.3 | Audyt wydajności (Lighthouse) | manual | 1d? | 2025-11-10 | 2025-11-10 | 4h |
| 46 | 4.3 | **Demo i dokumentacja końcowa** |  | 10d | 2025-11-10 | 2025-11-21 | 6.6h |
| 47 | 4.3.1 | Przygotowanie prezentacji Demo | manual | 1d? | 2025-11-10 | 2025-11-10 | 2.6h |
| 48 | 4.3.2 | Kompletowanie dok. technicznej | manual | 1d? | 2025-11-10 | 2025-11-10 | 4h |
